# Szene

How a schedule from MS Project changed from version to version. A marks actual dates.

## Version 1 (saved 2006-03-03)

Note of the change: Copied remotely

| ID | WBS | Task | Duration | Start | Finish | Predecessors | Complete | Total float | Constraint |
| --- | --- | --- | --- | --- | --- | --- | --- | --- | --- |
| 1 | 1 | **Library Preparation** | 3d? | 2006-02-27 A | 2006-03-01 A |  | 100% |  |  |
| 2 |  | MSVC | 1d? | 2006-02-27 A | 2006-02-27 A |  | 100% |  | start no earlier than 2006-02-27 |
| 3 |  | DJGPP | 2d | 2006-02-28 A | 2006-03-01 A |  | 100% |  |  |
| 6 | 2 | **Matedit2** | 4d? | 2006-03-02 A | 2006-03-07 | 1 | 58% | 0d |  |
| 7 |  | Depui Integration | 1d? | 2006-03-02 A | 2006-03-02 A |  | 100% |  |  |
| 8 |  | Alle Parameter editierbar | 2d | 2006-03-03 A | 2006-03-06 | 7 | 66% | 0d |  |
| 9 |  | Szene laden / speichern | 1d? | 2006-03-07 | 2006-03-07 | 8 |  | 0d |  |
| 11 | 3 | **Szene** | 5d? | 2006-02-28 A | 2006-03-06 | 1 | 20% | 1d |  |
| 12 |  | Dir cleanup | 1d? | 2006-02-28 A | 2006-02-28 A |  | 100% |  |  |
| 13 |  | Depui Integration | 1d? | 2006-03-02 | 2006-03-02 | 12 |  | 1d |  |
| 14 |  | File select | 1d? | 2006-03-03 | 2006-03-03 | 13 |  | 1d |  |
| 15 | 3.4 | **Controller** | 1d? | 2006-03-06 | 2006-03-06 | 14 |  | 1d |  |
| 16 |  | Walk | 1d? | 2006-03-06 | 2006-03-06 |  |  | 1d |  |
| 17 |  | Fly | 1d? | 2006-03-06 | 2006-03-06 |  |  | 1d |  |
| 19 | 4 | **Fly** | 1d | 2006-03-02 A | 2006-03-02 A | 1 | 100% |  |  |
| 20 |  | Anpassung neue DJGPP Version | 4h | 2006-03-02 A | 2006-03-02 A |  | 100% |  | start no earlier than 2006-03-02 |
| 21 |  | Palettenproblem | 4h | 2006-03-02 A | 2006-03-02 A | 20 | 100% |  |  |

## Version 2 (saved 2006-03-29)

Note of the change: git-svn-id: https://svn.code.sf.net/p/plushplayer/code/trunk@65 6446e83c-a70f-0410-a786-9c36226ba29d

Last finish 2006-03-07 → 2006-04-04 (+28d). Complete tasks 6 → 11.

Added:

| ID | Task | Duration | Start | Finish | Predecessors | Constraint |
| --- | --- | --- | --- | --- | --- | --- |
| 4 | Fix Mouse prb | 2d | 2006-03-06 A | 2006-03-07 A |  | start no earlier than 2006-03-06 |
| 13 | Shaderauswahl | 1d? | 2006-03-29 | 2006-03-30 | 11 |  |
| 14 | Szene speichern | 3d | 2006-03-30 | 2006-04-04 | 13 |  |

Changed:

| ID | Task | Start | Finish | Duration | Complete | Total float | Predecessors | Other |
| --- | --- | --- | --- | --- | --- | --- | --- | --- |
| 1 | **Library Preparation** |  | 2006-03-01 A → 2006-03-07 A (+6d) | 3d? → 7d? |  |  |  |  |
| 9 | **Matedit2** |  | 2006-03-07 → 2006-04-04 (+28d) | 4d? → 23.5d? | 58% → 67% |  | 1 → 6 |  |
| 11 | Basisparameter editierbar |  | 2006-03-06 → 2006-03-29 (+23d) | 2d → 6.5d | 66% → 92% |  |  | was named Alle Parameter editierbar |
| 12 | Szene laden | 2006-03-07 → 2006-03-10 A (+3d) | 2006-03-07 → 2006-03-13 A (+6d) | 1d? → 2d | 0% → 100% | 0d → none | 11 → none | was named Szene laden / speichern |
| 16 | **Szene** |  | 2006-03-06 → 2006-03-24 (+18d) | 5d? → 19d? | 20% → 80% | 1d → 6.5d |  |  |
| 18 | Depui Integration | 2006-03-02 → 2006-03-20 A (+18d) | 2006-03-02 → 2006-03-20 A (+18d) |  | 0% → 100% | 1d → none |  | constraint none → finish no earlier than 2006-03-20 |
| 19 | **Controller** | 2006-03-06 → 2006-03-22 A (+16d) | 2006-03-06 → 2006-03-23 A (+17d) | 1d? → 2d? | 0% → 100% | 1d → none | 22 → 18 |  |
| 20 | Walk | 2006-03-06 → 2006-03-22 A (+16d) | 2006-03-06 → 2006-03-22 A (+16d) |  | 0% → 100% | 1d → none |  |  |
| 21 | Fly | 2006-03-06 → 2006-03-23 A (+17d) | 2006-03-06 → 2006-03-23 A (+17d) |  | 0% → 100% | 1d → none | none → 20 |  |
| 22 | File select | 2006-03-03 → 2006-03-24 (+21d) | 2006-03-03 → 2006-03-24 (+21d) |  |  | 1d → 6.5d | 18 → 19 |  |

## Version 3 (saved 2006-04-03)

Note of the change: git-svn-id: https://svn.code.sf.net/p/plushplayer/code/trunk@68 6446e83c-a70f-0410-a786-9c36226ba29d

Last finish 2006-04-04 → 2006-04-06 (+2d). Complete tasks 11 → 12.

Changed:

| ID | Task | Start | Finish | Duration | Complete | Total float | Other |
| --- | --- | --- | --- | --- | --- | --- | --- |
| 9 | **Matedit2** |  | 2006-04-04 → 2006-04-06 (+2d) | 23.5d? → 26d? | 67% → 74% |  |  |
| 13 | Shaderauswahl | 2006-03-29 → 2006-04-03 A (+5d) | 2006-03-30 → 2006-04-03 A (+4d) |  | 0% → 100% | 0d → none | constraint none → start no earlier than 2006-04-03 |
| 14 | Szene speichern | 2006-03-30 → 2006-04-04 (+5d) | 2006-04-04 → 2006-04-06 (+2d) |  |  |  |  |

## Version 4 (saved 2007-02-08)

Note of the change: git-svn-id: https://svn.code.sf.net/p/plushplayer/code/trunk@75 6446e83c-a70f-0410-a786-9c36226ba29d

Last finish 2006-04-06 → 2006-04-04 (-2d). Complete tasks 12 → 14.

Removed: 14 Szene speichern

Changed:

| ID | Task | Start | Finish | Duration | Complete | Total float | Other |
| --- | --- | --- | --- | --- | --- | --- | --- |
| 9 | **Matedit2** |  | 2006-04-06 → 2006-04-04 A (-2d) | 26d? → 24d? | 74% → 100% | 0d → none |  |
| 11 | Basisparameter editierbar |  | 2006-03-29 → 2006-04-04 A (+6d) | 6.5d → 11d | 92% → 100% | 6.5d → none | constraint none → finish no earlier than 2006-04-04 |
| 15 | **Szene** |  | 2006-03-24 A |  | 80% → 100% | 6.5d → none |  |
| 21 | File select | 2006-03-24 A | 2006-03-24 A |  | 0% → 100% | 6.5d → none |  |
